# Project_Plan_MixedBag1.3

Schedule from MS Project, 2011-01-29 to 2011-08-05, A marks actual dates.
Hewlett-Packard

## Calendars

- Standard: Mon-Fri 08:00-12:00, 13:00-17:00; Sat-Sun off. Exceptions (off unless hours are given): 2011-03-05 08:00-12:00, 13:00-17:00, 2011-03-12 08:00-12:00, 13:00-17:00, 2011-03-20 08:00-12:00, 13:00-17:00.

## Resources

| Resource |
| --- |
| Mixed Bag |
| Jerry Ocanas |
| Ashish Kunwar |
| Julia Darcy |
| Jimmy Kalema |
| Team Mixed Bag |
| Julia Darcy/ Jerry Ocanas |

## Schedule

| ID | WBS | Task | Type | Duration | Start | Finish | Complete | Remaining | Actual finish | Baseline start | Baseline finish | Baseline duration | Total slack | Resources | Work | Actual work | Actual Work (hours) |
| --- | --- | --- | --- | --- | --- | --- | --- | --- | --- | --- | --- | --- | --- | --- | --- | --- | --- |
| 1 | 0 | **DayRise Blinds(Team Mixed Bag)** |  | 138d? | 2011-01-29 A | 2011-08-05 | 81% | 26.12d? |  | 2011-01-18 | 2011-05-12 | 0d | 0d |  | 10233h | 5195.47h |  |
| 2 | 0.1 | **Primary Phase (Phase 1)** |  | 45d? | 2011-01-29 A | 2011-03-28 | 99% | 0.15d? |  | 2011-01-18 | 2011-05-12 | 0d |  |  | 9378h | 5159.47h |  |
| 3 | 0.1.1 | **Project Management** |  | 78d | 2011-01-29 A | 2011-05-12 | 97% | 2.44d |  | 2011-01-29 | 2011-05-12 | 0d |  | Team Mixed Bag | 3065h | 2866.47h |  |
| 4 | 0.1.1.1 | **Team Meeting 1** |  | 1d | 2011-01-29 A | 2011-01-29 A | 100% |  |  | 2011-01-29 | 2011-01-29 | 0d |  | Team Mixed Bag | 25h | 25h | 2.5 |
| 5 | 0.1.1.1.1 | Assign team roles and responsibilities | manual | 1d | 2011-01-29 A | 2011-01-29 A | 100% |  |  | 2011-01-29 | 2011-01-29 | 0d |  |  | 8h | 8h |  |
| 6 | 0.1.1.1.2 | Research Organizational tools | manual | 1d | 2011-01-29 A | 2011-01-29 A | 100% |  |  | 2011-01-29 | 2011-01-29 | 0d |  |  | 8h | 8h | .5 |
| 7 | 0.1.1.2 | **Team Meeting 2** |  | 1d | 2011-02-08 A | 2011-02-08 A | 100% |  |  | 2011-02-08 | 2011-02-08 | 0d |  | Team Mixed Bag | 17h | 17h |  |
| 8 | 0.1.1.2.1 | Team name brainstorming | manual | 1d | 2011-02-08 A | 2011-02-08 A | 100% |  |  | 2011-02-08 | 2011-02-08 | 0d |  |  | 8h | 8h |  |
| 9 | 0.1.1.3 | **Team Status Update 1** |  | 4d | 2011-02-01 A | 2011-02-04 | 100% |  | 2011-02-18 | 2011-02-01 | 2011-02-04 | 0d |  | Team Mixed Bag | 105h | 105h |  |
| 10 | 0.1.1.3.1 | Presentation Preparation (Meeting 3) | manual | 1d | 2011-02-12 A | 2011-02-12 A | 100% |  |  | 2011-02-01 | 2011-02-01 | 0d |  |  | 8h | 8h | 2.5 |
| 11 | 0.1.1.3.2 | Presentation Review (Meeting 5) | manual | 1d | 2011-02-16 A | 2011-02-16 A | 100% |  |  | 2011-02-03 | 2011-02-03 | 0d |  |  | 8h | 8h |  |
| 12 | 0.1.1.3.3 | Rehearsal (Meeting 6) | manual | 1d | 2011-02-18 A | 2011-02-18 A | 100% |  |  | 2011-02-04 | 2011-02-04 | 0d |  |  | 8h | 8h | .5 |
| 13 | 0.1.1.4 | **Team Meeting 4** |  | 1d | 2011-02-15 A | 2011-02-15 A | 100% |  |  | 2011-02-15 | 2011-02-15 | 0d |  | Team Mixed Bag | 17h | 17h | 1.75 |
| 14 | 0.1.1.4.1 | Brainstorming Requirements | manual | 1d | 2011-02-15 A | 2011-02-15 A | 100% |  |  | 2011-02-15 | 2011-02-15 | 0d |  |  | 8h | 8h | 1.75 |
| 15 | 0.1.1.5 | **Team Meeting 7** |  | 1d | 2011-02-19 A | 2011-02-19 A | 100% |  |  | 2011-02-19 | 2011-02-19 | 0d |  | Team Mixed Bag | 17h | 17h |  |
| 16 | 0.1.1.5.1 | Brainstorming Requirements again | manual | 1d | 2011-02-19 A | 2011-02-19 A | 100% |  |  | 2011-02-19 | 2011-02-19 | 0d |  |  | 8h | 8h |  |
| 17 | 0.1.1.6 | **Requirements Elicitation Meeting** |  | 1d | 2011-02-24 A | 2011-02-24 | 100% |  | 2011-02-28 | 2011-02-24 | 2011-02-24 | 0d |  | Team Mixed Bag | 17h | 17h |  |
| 18 | 0.1.1.6.1 | List of Requirements | manual | 1d | 2011-02-28 A | 2011-02-28 A | 100% |  |  | 2011-02-24 | 2011-02-24 | 0d |  |  | 8h | 8h |  |
| 19 | 0.1.1.7 | **Team Meeting 8** |  | 1d? | 2011-02-22 A | 2011-02-22 A | 100% |  |  | 2011-02-22 | 2011-02-22 | 0d |  | Team Mixed Bag | 17h | 17h |  |
| 20 | 0.1.1.7.1 | Brainstorming Requirements | manual | 1d | 2011-02-22 A | 2011-02-22 A | 100% |  |  | 2011-02-22 | 2011-02-22 | 0d |  |  | 8h | 8h |  |
| 21 | 0.1.1.8 | **Team Meeting 9** |  | 1d | 2011-02-26 A | 2011-02-26 A | 100% |  |  | 2011-02-26 | 2011-02-26 | 0d |  | Team Mixed Bag | 17h | 17h |  |
| 22 | 0.1.1.8.1 | Assign Charter | manual | 1d | 2011-02-26 A | 2011-02-26 A | 100% |  |  | 2011-02-26 | 2011-02-26 | 0d |  |  | 8h | 8h |  |
| 23 | 0.1.1.9 | **Team Meeting 10** |  | 1d? | 2011-03-01 A | 2011-03-01 A | 100% |  |  | 2011-03-01 | 2011-03-01 | 0d |  | Team Mixed Bag | 17h | 17h |  |
| 24 | 0.1.1.9.1 | Presentation Preparation TS 2 | manual | 1d | 2011-03-01 A | 2011-03-01 A | 100% |  |  | 2011-03-01 | 2011-03-01 | 0d |  |  | 8h | 8h |  |

| ID | WBS | Task | Type | Duration | Start | Finish | Complete | Remaining | Actual finish | Baseline start | Baseline finish | Baseline duration | Resources | Work | Actual work | Actual Work (hours) | Baseline Week # | Actual Week # |
| --- | --- | --- | --- | --- | --- | --- | --- | --- | --- | --- | --- | --- | --- | --- | --- | --- | --- | --- |
| 25 | 0.1.1.10 | **Team Meeting 11** |  | 1d | 2011-03-04 A | 2011-03-04 A | 100% |  |  | 2011-03-04 | 2011-03-04 | 0d | Team Mixed Bag | 17h | 17h | .5 |  |  |
| 26 | 0.1.1.10.1 | Presentation Practice TS 2 | manual | 1d | 2011-03-04 A | 2011-03-04 A | 100% |  |  | 2011-03-04 | 2011-03-04 | 0d |  | 8h | 8h | .5 |  |  |
| 27 | 0.1.1.11 | **Team Meeting 12** |  | 1d? | 2011-03-08 A | 2011-03-08 A | 100% |  |  | 2011-03-08 | 2011-03-08 | 0d | Team Mixed Bag | 17h | 17h |  |  |  |
| 28 | 0.1.1.11.1 | Assign SRD sections | manual | 1d | 2011-03-08 A | 2011-03-08 A | 100% |  |  | 2011-03-08 | 2011-03-08 | 0d |  | 8h | 8h |  |  |  |
| 29 | 0.1.1.12 | **Team Meeting 13** |  | 1d? | 2011-03-20 A | 2011-03-20 A | 100% |  |  | 2011-03-20 | 2011-03-20 | 0d | Team Mixed Bag | 17h | 17h |  |  |  |
| 30 | 0.1.1.12.1 | SRD formatting | manual | 1d | 2011-03-20 A | 2011-03-20 A | 100% |  |  | 2011-03-20 | 2011-03-20 | 0d |  | 8h | 8h |  |  |  |
| 31 | 0.1.1.13 | **Team Meeting 14** |  | 1d? | 2011-03-24 A | 2011-03-24 A | 100% |  |  | 2011-03-24 | 2011-03-24 | 0d | Team Mixed Bag | 17h | 17h | 2.5 |  |  |
| 32 | 0.1.1.13.1 | Presentation Preparation TS 3 | manual | 1d | 2011-03-24 A | 2011-03-24 A | 100% |  |  | 2011-03-24 | 2011-03-24 | 0d |  | 8h | 8h | 2.5 |  |  |
| 33 | 0.1.1.14 | **Team Meeting 15** |  | 1d | 2011-03-25 A | 2011-03-25 A | 100% |  |  | 2011-03-25 | 2011-03-25 | 0d | Team Mixed Bag | 17h | 17h | .5 |  |  |
| 34 | 0.1.1.14.1 | Presentation Practice TS 3 | manual | 1d | 2011-03-25 A | 2011-03-25 A | 100% |  |  | 2011-03-25 | 2011-03-25 | 0d |  | 8h | 8h | .5 |  |  |
| 35 | 0.1.1.15 | **Team Meeting 16** |  | 1d | 2011-03-26 A | 2011-03-26 A | 100% |  |  | 2011-03-26 | 2011-03-26 | 0d | Team Mixed Bag | 33h | 33h |  |  |  |
| 36 | 0.1.1.15.1 | Charter Formatting | manual | 1d | 2011-03-26 A | 2011-03-26 A | 100% |  |  | 2011-03-26 | 2011-03-26 | 0d |  | 8h | 8h |  |  |  |
| 37 | 0.1.1.15.2 | Project Plan Cleanup | manual | 1d | 2011-03-26 A | 2011-03-26 A | 100% |  |  | 2011-03-26 | 2011-03-26 | 0d |  | 8h | 8h |  |  |  |
| 38 | 0.1.1.15.3 | Slides | manual | 1d | 2011-03-26 A | 2011-03-26 A | 100% |  |  | 2011-03-26 | 2011-03-26 | 0d |  | 8h | 8h |  |  |  |
| 39 | 0.1.1.16 | **Team Meeting 17** |  | 1d | 2011-03-28 A | 2011-03-28 A | 100% |  |  | 2011-03-28 | 2011-03-28 | 0d | Team Mixed Bag | 17h | 17h |  | 10 | 10 |
| 40 | 0.1.1.16.1 | Practice Charter and Project Plan preso | manual | 1d | 2011-03-28 A | 2011-03-28 A | 100% |  |  | 2011-03-28 | 2011-03-28 | 0d |  | 8h | 8h |  |  |  |
| 41 | 0.1.1.17 | **Team Meeting 18** |  | 1d | 2011-03-28 A | 2011-03-28 | 100% |  | 2011-04-03 | 2011-04-03 | 2011-04-03 | 0d | Team Mixed Bag | 17h | 17h |  | 11 | 11 |
| 42 | 0.1.1.17.1 | Assign Research Tasks on individual components | manual | 1d | 2011-04-03 A | 2011-04-03 A | 100% |  |  | 2011-04-03 | 2011-04-03 | 0d |  | 8h | 8h |  |  |  |
| 43 | 0.1.1.18 | **Team Meeting 19** |  | 1d | 2011-04-07 A | 2011-04-07 | 99% | 0d |  | 2011-04-07 | 2011-04-07 | 0d | Team Mixed Bag | 9h | 8h |  | 11 | 11 |
| 44 | 0.1.1.18.3 | Team Status Report | manual | 1d | 2011-04-07 A | 2011-04-07 A | 100% |  |  | 2011-04-07 | 2011-04-07 | 0d |  |  |  |  |  |  |
| 45 | 0.1.1.19 | **Team Meeting 20** |  | 2d | 2011-04-09 A | 2011-04-11 | 99% | 0d |  | 2011-04-09 | 2011-04-09 | 0d | Team Mixed Bag | 57h |  |  | 11 | 11 |
| 46 | 0.1.1.19.4 | SRD 2nd review | manual | 1d | 2011-04-09 A | 2011-04-09 A | 100% |  |  | 2011-04-09 | 2011-04-09 | 0d |  |  |  |  |  |  |
| 47 | 0.1.1.20 | **Team Meeting 21** |  | 1d | 2011-04-11 A | 2011-04-11 | 99% | 0d |  | 2011-04-11 | 2011-04-11 | 0d | Team Mixed Bag | 18h | 9h |  | 12 | 12 |
| 48 | 0.1.1.20.2 | SRD gate review slides | manual | 1d | 2011-04-11 A | 2011-04-11 A | 100% |  |  | 2011-04-11 | 2011-04-11 | 0d | Team Mixed Bag | 9h | 9h |  |  |  |

| ID | WBS | Task | Type | Duration | Start | Finish | Complete | Remaining | Baseline start | Baseline finish | Baseline duration | Resources | Work | Actual work | Baseline Week # | Actual Week # | Actual Work (hours) |
| --- | --- | --- | --- | --- | --- | --- | --- | --- | --- | --- | --- | --- | --- | --- | --- | --- | --- |
| 49 | 0.1.1.21 | **Team Meeting 22** |  | 1d | 2011-04-12 A | 2011-04-12 | 99% | 0d | 2011-04-12 | 2011-04-12 | 0d | Team Mixed Bag | 18h | 9h | 12 | 12 |  |
| 50 | 0.1.1.21.2 | practice Presentation (Mock) | manual | 1d | 2011-04-12 A | 2011-04-12 A | 100% |  | 2011-04-12 | 2011-04-12 | 0d | Team Mixed Bag | 9h | 9h |  |  |  |
| 51 | 0.1.1.22 | **Team Meeting 23** |  | 1d | 2011-04-13 A | 2011-04-13 | 99% | 0d | 2011-04-13 | 2011-04-13 | 0d | Team Mixed Bag | 18h | 9h | 12 | 12 |  |
| 52 | 0.1.1.22.2 | practice Presentation (Mock) | manual | 1d | 2011-04-13 A | 2011-04-13 A | 100% |  | 2011-04-13 | 2011-04-13 | 0d | Team Mixed Bag | 9h | 9h |  |  |  |
| 53 | 0.1.1.23 | **Team Meeting 24** |  | 1d | 2011-04-19 A | 2011-04-19 | 99% | 0d | 2011-04-19 | 2011-04-19 | 0d | Team Mixed Bag | 18h | 9h | 13 | 13 |  |
| 54 | 0.1.1.23.2 | SRD final draft review | manual | 1d | 2011-04-19 A | 2011-04-19 A | 100% |  | 2011-04-19 | 2011-04-19 | 0d | Team Mixed Bag | 9h | 9h |  |  |  |
| 55 | 0.1.1.24 | **Team Meeting 25** |  | 1d | 2011-04-21 A | 2011-04-21 | 99% | 0d | 2011-04-21 | 2011-04-21 | 0d | Team Mixed Bag | 18h | 9h | 13 | 13 |  |
| 56 | 0.1.1.24.2 | team status update presentation | manual | 1d | 2011-04-21 A | 2011-04-21 A | 100% |  | 2011-04-21 | 2011-04-21 | 0d | Team Mixed Bag | 9h | 9h |  |  |  |
| 57 | 0.1.1.25 | **Team Meeting 26** |  | 1d | 2011-04-30 A | 2011-04-30 | 99% | 0d | 2011-04-30 | 2011-04-30 | 0d | Team Mixed Bag | 18h | 9h | 14 | 14 |  |
| 58 | 0.1.1.25.2 | Brainstorming for ADS | manual | 1d | 2011-04-30 A | 2011-04-30 A | 100% |  | 2011-04-30 | 2011-04-30 | 0d | Team Mixed Bag | 9h | 9h |  |  |  |
| 59 | 0.1.1.26 | **Team Meeting 27** |  | 1d | 2011-05-05 A | 2011-05-05 | 99% | 0d | 2011-05-05 | 2011-05-05 | 0d | Team Mixed Bag | 9h |  | 15 | 15 |  |
| 60 | 0.1.1.26.2 | Charter and Project Plan final review | manual | 1d | 2011-05-05 A | 2011-05-05 A | 100% |  | 2011-05-05 | 2011-05-05 | 0d |  |  |  |  |  |  |
| 61 | 0.1.1.27 | **Team Meeting 28** |  | 1d? | 2011-01-29 | 2011-01-29 |  |  | 2011-05-08 | 2011-05-08 | 0d |  |  |  | 16 |  |  |
| 62 | 0.1.1.27.4 | Final Exam Discussion | manual | 1d | 2011-05-08 | 2011-05-08 |  |  | 2011-05-08 | 2011-05-08 | 0d |  |  |  |  |  |  |
| 63 | 0.1.2 | **Project Charter** |  | 53d | 2011-02-27 A | 2011-05-06 A | 100% |  | 2011-02-26 | 2011-05-06 | 0d |  | 281h | 281h |  |  | 37 |
| 64 | 0.1.2.1 | **First Draft** |  | 23d | 2011-02-27 A | 2011-03-26 A | 100% |  | 2011-02-26 | 2011-03-27 | 0d |  | 248h | 248h |  |  | 35 |
| 65 | 0.1.2.1.1 | **General Organization** |  | 0d | 2011-02-27 A | 2011-02-27 A | 100% |  | 2011-02-26 | 2011-03-01 | 0d | Jerry Ocanas | 16h | 16h |  |  | 1.5 |
| 66 | 0.1.2.1.1.1 | Initial Research | manual | 1d | 2011-02-27 A | 2011-02-27 A | 100% |  | 2011-02-26 | 2011-03-01 | 0d |  | 8h | 8h |  |  | 0.5 |
| 67 | 0.1.2.1.1.2 | Draft complete | manual | 1d | 2011-02-27 A | 2011-02-27 A | 100% |  | 2011-02-26 | 2011-03-01 | 0d |  | 8h | 8h |  |  |  |
| 68 | 0.1.2.1.2 | **Scope Statement** |  | 0d | 2011-02-27 A | 2011-02-27 A | 100% |  | 2011-03-01 | 2011-03-05 | 0d | Jerry Ocanas | 16h | 16h |  |  | 2.5 |
| 69 | 0.1.2.1.2.1 | Initial Research | manual | 1d | 2011-02-27 A | 2011-02-27 A | 100% |  | 2011-03-01 | 2011-03-05 | 0d |  | 8h | 8h |  |  | .5 |
| 70 | 0.1.2.1.2.2 | Draft complete | manual | 1d | 2011-02-27 A | 2011-02-27 A | 100% |  | 2011-03-01 | 2011-03-05 | 0d |  | 8h | 8h |  |  |  |
| 71 | 0.1.2.1.3 | **Cost Management Plan** |  | 0d | 2011-02-27 A | 2011-02-27 A | 100% |  | 2011-02-26 | 2011-03-01 | 0d | Ashish Kunwar | 16h | 16h |  |  |  |
| 72 | 0.1.2.1.3.1 | Initial Research | manual | 1d | 2011-02-27 A | 2011-02-27 A | 100% |  | 2011-02-26 | 2011-03-01 | 0d |  | 8h | 8h |  |  |  |
| 73 | 0.1.2.1.3.2 | Draft complete | manual | 1d | 2011-02-27 A | 2011-02-27 A | 100% |  | 2011-02-26 | 2011-03-01 | 0d |  | 8h | 8h |  |  |  |

| ID | WBS | Task | Type | Duration | Start | Finish | Complete | Baseline start | Baseline finish | Baseline duration | Resources | Work | Actual work | Actual Work (hours) |
| --- | --- | --- | --- | --- | --- | --- | --- | --- | --- | --- | --- | --- | --- | --- |
| 74 | 0.1.2.1.4 | **Earned Value Management** |  | 1d | 2011-03-01 A | 2011-03-01 A | 100% | 2011-02-26 | 2011-03-01 | 0d | Julia Darcy | 16h | 16h |  |
| 75 | 0.1.2.1.4.1 | Initial Research | manual | 1d | 2011-03-01 A | 2011-03-01 A | 100% | 2011-02-26 | 2011-03-01 | 0d |  | 8h | 8h |  |
| 76 | 0.1.2.1.4.2 | Draft complete | manual | 1d | 2011-03-01 A | 2011-03-01 A | 100% | 2011-02-26 | 2011-03-01 | 0d |  | 8h | 8h |  |
| 77 | 0.1.2.1.5 | **Scope Management Plan** |  | 1d | 2011-03-01 A | 2011-03-01 A | 100% | 2011-02-26 | 2011-03-01 | 0d | Jimmy Kalema | 16h | 16h |  |
| 78 | 0.1.2.1.5.1 | Initial Research | manual | 1d | 2011-03-01 A | 2011-03-01 A | 100% | 2011-02-26 | 2011-03-01 | 0d |  | 8h | 8h |  |
| 79 | 0.1.2.1.5.2 | Draft complete | manual | 1d | 2011-03-01 A | 2011-03-01 A | 100% | 2011-02-26 | 2011-03-01 | 0d |  | 8h | 8h |  |
| 80 | 0.1.2.1.6 | **Work Breakdown Structure** |  | 1d | 2011-03-05 A | 2011-03-05 A | 100% | 2011-03-05 | 2011-03-08 | 0d | Jerry Ocanas | 16h | 16h | 2.5 |
| 81 | 0.1.2.1.6.1 | Initial Research | manual | 1d | 2011-03-05 A | 2011-03-05 A | 100% | 2011-03-05 | 2011-03-08 | 0d |  | 8h | 8h | .5 |
| 82 | 0.1.2.1.6.2 | Draft complete | manual | 1d | 2011-03-05 A | 2011-03-05 A | 100% | 2011-03-05 | 2011-03-08 | 0d |  | 8h | 8h |  |
| 83 | 0.1.2.1.7 | **Quality Management Plan** |  | 1d | 2011-03-04 A | 2011-03-04 A | 100% | 2011-03-01 | 2011-03-05 | 0d | Jimmy Kalema | 24h | 24h |  |
| 84 | 0.1.2.1.7.1 | Initial Research | manual | 1d | 2011-03-04 A | 2011-03-04 A | 100% | 2011-03-01 | 2011-03-05 | 0d |  | 8h | 8h |  |
| 85 | 0.1.2.1.7.2 | Draft complete | manual | 1d | 2011-03-04 A | 2011-03-04 A | 100% | 2011-03-01 | 2011-03-05 | 0d |  | 8h | 8h |  |
| 86 | 0.1.2.1.8 | **Communications Plan** |  | 0d | 2011-02-27 A | 2011-02-27 A | 100% | 2011-03-01 | 2011-03-05 | 0d | Ashish Kunwar | 16h | 16h |  |
| 87 | 0.1.2.1.8.1 | Initial Research | manual | 1d | 2011-02-27 A | 2011-02-27 A | 100% | 2011-03-01 | 2011-03-05 | 0d |  | 8h | 8h |  |
| 88 | 0.1.2.1.8.2 | Draft complete | manual | 1d | 2011-02-27 A | 2011-02-27 A | 100% | 2011-03-01 | 2011-03-05 | 0d |  | 8h | 8h |  |
| 89 | 0.1.2.1.9 | **Change Management Plan** |  | 0d | 2011-02-27 A | 2011-02-27 A | 100% | 2011-03-21 | 2011-03-25 | 0d | Ashish Kunwar | 16h | 16h |  |
| 90 | 0.1.2.1.9.1 | Initial Research | manual | 1d | 2011-02-27 A | 2011-02-27 A | 100% | 2011-03-21 | 2011-03-25 | 0d |  | 8h | 8h |  |
| 91 | 0.1.2.1.9.2 | Draft complete | manual | 1d | 2011-02-27 A | 2011-02-27 A | 100% | 2011-03-21 | 2011-03-25 | 0d |  | 8h | 8h |  |
| 92 | 0.1.2.1.10 | **Risk Management Plan** |  | 1d | 2011-03-24 A | 2011-03-24 A | 100% | 2011-03-21 | 2011-03-25 | 0d | Jimmy Kalema | 24h | 24h |  |
| 93 | 0.1.2.1.10.1 | Initial Research | manual | 1d | 2011-03-24 A | 2011-03-24 A | 100% | 2011-03-21 | 2011-03-25 | 0d |  | 8h | 8h |  |
| 94 | 0.1.2.1.10.2 | Draft complete | manual | 1d | 2011-03-24 A | 2011-03-24 A | 100% | 2011-03-21 | 2011-03-25 | 0d |  | 8h | 8h |  |
| 95 | 0.1.2.1.11 | **Staffing Management Plan** |  | 1d | 2011-03-04 A | 2011-03-04 A | 100% | 2011-03-01 | 2011-03-05 | 0d | Julia Darcy | 24h | 24h | 1.5 |
| 96 | 0.1.2.1.11.1 | Initial Research | manual | 1d | 2011-03-04 A | 2011-03-04 A | 100% | 2011-03-01 | 2011-03-05 | 0d |  | 8h | 8h | .5 |
| 97 | 0.1.2.1.11.2 | Draft complete | manual | 1d | 2011-03-04 A | 2011-03-04 A | 100% | 2011-03-01 | 2011-03-05 | 0d |  | 8h | 8h |  |

| ID | WBS | Task | Type | Duration | Start | Finish | Complete | Remaining | Baseline start | Baseline finish | Baseline duration | Constraint | Resources | Work | Actual work | Actual Work (hours) | Baseline Week # | Actual Week # |
| --- | --- | --- | --- | --- | --- | --- | --- | --- | --- | --- | --- | --- | --- | --- | --- | --- | --- | --- |
| 98 | 0.1.2.1.12 | **Procurement Management Plan** |  | 1d | 2011-03-25 A | 2011-03-25 A | 100% |  | 2011-03-21 | 2011-03-25 | 0d |  | Julia Darcy | 24h | 24h | 2.5 |  |  |
| 99 | 0.1.2.1.12.1 | Initial Research | manual | 1d | 2011-03-25 A | 2011-03-25 A | 100% |  | 2011-03-21 | 2011-03-25 | 0d |  |  | 8h | 8h | .5 |  |  |
| 100 | 0.1.2.1.12.2 | Draft complete | manual | 1d | 2011-03-25 A | 2011-03-25 A | 100% |  | 2011-03-21 | 2011-03-25 | 0d |  |  | 8h | 8h |  |  |  |
| 101 | 0.1.2.1.13 | **Project Closeout Report** |  | 1d | 2011-03-22 A | 2011-03-22 A | 100% |  | 2011-03-21 | 2011-03-25 | 0d |  | Jerry Ocanas | 24h | 24h | 1.5 |  |  |
| 102 | 0.1.2.1.13.1 | Initial Research | manual | 1d | 2011-03-22 A | 2011-03-22 A | 100% |  | 2011-03-21 | 2011-03-25 | 0d |  |  | 8h | 8h | .5 |  |  |
| 103 | 0.1.2.1.13.2 | Draft complete | manual | 1d | 2011-03-22 A | 2011-03-22 A | 100% |  | 2011-03-21 | 2011-03-25 | 0d |  |  | 8h | 8h |  |  |  |
| 104 | 0.1.2.1.14 | Review | milestone | 0d | 2011-03-26 A | 2011-03-26 A | 100% |  | 2011-03-26 | 2011-03-27 | 0d |  | Team Mixed Bag |  |  |  | 10 | 10 |
| 105 | 0.1.2.2 | Final Draft |  | 2d | 2011-05-05 A | 2011-05-06 A | 100% |  | 2011-03-29 | 2011-05-06 | 0d |  | Jerry Ocanas | 33h | 33h |  |  |  |
| 106 | 0.1.3 | Unused number placeholder | inactive, manual | 1d? | 2011-01-29 | 2011-01-29 |  |  |  |  |  |  |  |  |  |  |  |  |
| 107 | 0.1.4 | **Project Plan** |  | 56d | 2011-02-22 A | 2011-05-05 A | 100% |  | 2011-02-22 | 2011-05-12 | 0d |  |  | 108h | 108h | 20 |  |  |
| 108 | 0.1.4.7 | Project Schedule (Preliminary Phase) | manual | 1d | 2011-02-22 A | 2011-02-22 A | 100% |  | 2011-02-22 | 2011-02-22 | 0d |  | Julia Darcy | 8h | 8h |  |  |  |
| 109 | 0.1.4.8 | Project Plan Weekly Maintenance 1 |  | 1d | 2011-03-01 A | 2011-03-01 A | 100% |  | 2011-03-01 | 2011-03-01 | 0d | start no earlier than 2011-03-01 | Julia Darcy | 8h | 8h |  |  |  |
| 110 | 0.1.4.9 | Project Plan Weekly Maintenance 2 | inactive, manual | 0.88d | 2011-03-08 | 2011-03-08 |  |  | 2011-03-08 | 2011-03-08 | 0d |  | Julia Darcy | 8h |  |  |  |  |
| 111 | 0.1.4.10 | Project Plan Weekly Maintenance 3 | inactive, manual | 0.88d | 2011-03-15 | 2011-03-15 |  |  | 2011-03-15 | 2011-03-15 | 0d |  | Julia Darcy | 8h |  |  |  |  |
| 112 | 0.1.4.11 | Project Plan Weekly Maintenance 4 |  | 1d | 2011-03-22 A | 2011-03-22 A | 100% |  | 2011-03-22 | 2011-03-22 | 0d | start no earlier than 2011-03-22 | Julia Darcy | 8h | 8h |  |  |  |
| 113 | 0.1.4.12 | First Draft for Review | manual | 2d | 2011-03-26 A | 2011-03-27 A | 100% |  | 2011-03-26 | 2011-03-27 | 0d |  | Julia Darcy | 33h | 33h |  | 10 | 10 |
| 114 | 0.1.4.15 | Project Plan Weekly Maintenance 5 | manual | 1d | 2011-04-07 A | 2011-04-07 A | 100% |  | 2011-04-07 | 2011-04-07 | 0d |  | Julia Darcy | 9h | 9h |  | 11 | 11 |
| 115 | 0.1.4.16 | Project Plan Weekly Maintenance 6 | inactive, manual | 1d? | 2011-02-22 | 2011-02-22 |  |  | 2011-04-14 | 2011-04-14 | 0d |  | Julia Darcy | 9h |  |  |  |  |
| 116 | 0.1.4.17 | Project Plan Weekly Maintenance 7 | manual | 1d | 2011-04-21 A | 2011-04-21 A | 100% |  | 2011-04-21 | 2011-04-21 | 0d |  | Julia Darcy | 9h | 9h |  | 13 | 13 |
| 117 | 0.1.4.18 | Project Plan Weekly Maintenance 8 | manual | 1d | 2011-04-28 A | 2011-04-28 A | 100% |  | 2011-04-28 | 2011-04-28 | 0d |  | Julia Darcy | 9h | 9h |  | 14 |  |
| 118 | 0.1.4.19 | Project Plan final review | manual | 3d | 2011-05-03 A | 2011-05-05 A | 100% |  | 2011-05-02 | 2011-05-05 | 0d |  | Julia Darcy/ Jerry Ocanas | 24h | 24h |  | 15 |  |
| 119 | 0.1.5 | Unused number placeholder | inactive, manual | 1d? | 2011-01-29 | 2011-01-29 |  |  |  |  |  |  |  |  |  |  |  |  |
| 120 | 0.1.6 | **SRD** |  | 45d | 2011-03-05 A | 2011-05-03 | 99% | 0d | 2011-03-05 | 2011-05-03 | 0d |  |  | 5924h | 1904h | 64 |  |  |
| 121 | 0.1.6.1 | **First Draft** |  | 13d | 2011-03-05 A | 2011-03-20 | 99% | 0d | 2011-03-05 | 2011-03-20 | 0d |  |  | 5418h | 1398h |  |  |  |
| 122 | 0.1.6.1.1 | **Product Services & Summary** |  | 3d | 2011-03-05 A | 2011-03-06 | 99% | 0d | 2011-03-05 | 2011-03-08 | 0d |  | Jerry Ocanas | 56h | 32h |  |  |  |
| 123 | 0.1.6.1.1.3 | Initial Research | manual | 3d | 2011-03-05 A | 2011-03-08 A | 100% |  | 2011-03-05 | 2011-03-08 | 0d |  |  | 16h | 16h | 0.5 |  |  |
| 124 | 0.1.6.1.1.4 | Draft complete | manual | 3d | 2011-03-05 A | 2011-03-08 A | 100% |  | 2011-03-05 | 2011-03-08 | 0d |  |  | 16h | 16h |  |  |  |

| ID | WBS | Task | Type | Duration | Start | Finish | Complete | Remaining | Actual start | Baseline start | Baseline finish | Baseline duration | Constraint | Resources | Work | Actual work | Actual Work (hours) |
| --- | --- | --- | --- | --- | --- | --- | --- | --- | --- | --- | --- | --- | --- | --- | --- | --- | --- |
| 125 | 0.1.6.1.2 | **Environment** |  | 1d | 2011-03-05 A | 2011-03-06 | 99% | 0d |  | 2011-03-05 | 2011-03-08 | 0d |  | Ashish Kunwar | 40h | 16h |  |
| 126 | 0.1.6.1.2.3 | Initial Research | manual | 3d | 2011-03-05 A | 2011-03-08 A | 100% |  |  | 2011-03-05 | 2011-03-08 | 0d |  |  | 8h | 8h |  |
| 127 | 0.1.6.1.2.4 | Draft complete | manual | 3d | 2011-03-05 A | 2011-03-08 A | 100% |  |  | 2011-03-05 | 2011-03-08 | 0d |  |  | 8h | 8h |  |
| 128 | 0.1.6.1.3 | **External Interface and Data Flows** |  | 3d | 2011-03-05 A | 2011-03-06 | 99% | 0d |  | 2011-03-05 | 2011-03-08 | 0d |  | Jerry Ocanas | 56h | 32h |  |
| 129 | 0.1.6.1.3.3 | Initial Research | manual | 1.33d | 2011-03-17 A | 2011-03-18 A | 100% |  |  | 2011-03-05 | 2011-03-08 | 0d |  |  | 16h | 16h | 0.5 |
| 130 | 0.1.6.1.3.4 | Draft complete | manual | 1.33d | 2011-03-17 A | 2011-03-18 A | 100% |  |  | 2011-03-05 | 2011-03-08 | 0d |  |  | 16h | 16h |  |
| 131 | 0.1.6.1.4 | **Customer Requirements** |  | 3d | 2011-03-05 | 2011-03-06 | 99% | 0d | 2011-03-10 | 2011-03-05 | 2011-03-08 | 0d |  | Julia Darcy | 136h | 112h |  |
| 132 | 0.1.6.1.4.3 | Initial Research | manual | 9d | 2011-03-10 A | 2011-03-20 A | 100% |  |  | 2011-03-05 | 2011-03-08 | 0d |  |  | 56h | 56h | 0.5 |
| 133 | 0.1.6.1.4.4 | Draft complete | manual | 9d | 2011-03-10 A | 2011-03-20 A | 100% |  |  | 2011-03-05 | 2011-03-08 | 0d |  |  | 56h | 56h |  |
| 134 | 0.1.6.1.5 | **Localization Requirements** |  | 1d | 2011-03-05 A | 2011-03-06 | 99% | 0d |  | 2011-03-05 | 2011-03-08 | 0d |  | Jimmy Kalema | 40h | 16h |  |
| 135 | 0.1.6.1.5.3 | Initial Research | manual | 3d | 2011-03-05 A | 2011-03-08 A | 100% |  |  | 2011-03-05 | 2011-03-08 | 0d |  |  | 8h | 8h | 0.5 |
| 136 | 0.1.6.1.5.4 | Draft complete | manual | 3d | 2011-03-05 A | 2011-03-08 A | 100% |  |  | 2011-03-05 | 2011-03-08 | 0d |  |  | 8h | 8h |  |
| 137 | 0.1.6.1.6 | **Marketing & Sales Requirements** |  | 1d | 2011-03-05 A | 2011-03-06 | 99% | 0d |  | 2011-03-05 | 2011-03-08 | 0d |  | Jimmy Kalema | 40h | 16h |  |
| 138 | 0.1.6.1.6.3 | Initial Research | manual | 3d | 2011-03-05 A | 2011-03-08 A | 100% |  |  | 2011-03-05 | 2011-03-08 | 0d |  |  | 8h | 8h | 0.5 |
| 139 | 0.1.6.1.6.4 | Draft complete | manual | 3d | 2011-03-05 A | 2011-03-08 A | 100% |  |  | 2011-03-05 | 2011-03-08 | 0d |  |  | 8h | 8h |  |
| 140 | 0.1.6.1.7 | **Administrative Requirements** |  | 7d | 2011-03-05 A | 2011-03-07 | 99% | 0d |  | 2011-03-05 | 2011-03-12 | 0d |  | Jerry Ocanas | 80h | 24h |  |
| 141 | 0.1.6.1.7.3 | Initial Research | manual | 3d | 2011-03-09 A | 2011-03-11 A | 100% |  |  | 2011-03-05 | 2011-03-12 | 0d |  |  | 24h | 24h | 0.5 |
| 142 | 0.1.6.1.7.4 | Draft complete |  | 3d | 2011-03-09 A | 2011-03-11 A | 100% |  |  | 2011-03-05 | 2011-03-12 | 0d | finish no earlier than 2011-03-11 |  |  |  |  |
| 143 | 0.1.6.1.8 | **Development Requirements** |  | 1d | 2011-03-05 A | 2011-03-06 | 99% | 0d |  | 2011-03-05 | 2011-03-08 | 0d |  | Ashish Kunwar | 72h | 48h |  |
| 144 | 0.1.6.1.8.3 | Initial Research | manual | 3d | 2011-03-05 A | 2011-03-08 A | 100% |  |  | 2011-03-05 | 2011-03-08 | 0d |  |  | 24h | 24h |  |
| 145 | 0.1.6.1.8.4 | Draft complete | manual | 3d | 2011-03-05 A | 2011-03-08 A | 100% |  |  | 2011-03-05 | 2011-03-08 | 0d |  |  | 24h | 24h |  |
| 146 | 0.1.6.1.9 | **Quality Requirements** |  | 3d | 2011-03-05 | 2011-03-06 | 99% | 0d | 2011-03-10 | 2011-03-05 | 2011-03-08 | 0d |  | Julia Darcy | 104h | 80h |  |
| 147 | 0.1.6.1.9.3 | Initial Research |  | 9d | 2011-03-10 A | 2011-03-20 A | 100% |  |  | 2011-03-05 | 2011-03-08 | 0d | finish no earlier than 2011-03-12 |  | 24h | 24h | 0.5 |
| 148 | 0.1.6.1.9.4 | Draft complete | manual | 9d | 2011-03-10 A | 2011-03-20 A | 100% |  |  | 2011-03-05 | 2011-03-08 | 0d |  |  | 56h | 56h | 1.5 |

| ID | WBS | Task | Type | Duration | Start | Finish | Complete | Remaining | Actual start | Baseline start | Baseline finish | Baseline duration | Constraint | Resources | Work | Actual work | Actual Work (hours) |
| --- | --- | --- | --- | --- | --- | --- | --- | --- | --- | --- | --- | --- | --- | --- | --- | --- | --- |
| 149 | 0.1.6.1.10 | **Safety Requirements** |  | 7d | 2011-03-05 | 2011-03-12 | 99% | 0d | 2011-03-17 | 2011-03-05 | 2011-03-12 | 0d |  | Jimmy Kalema | 193h | 16h |  |
| 150 | 0.1.6.1.10.3 | Initial Research |  | 2d | 2011-03-17 A | 2011-03-18 A | 100% |  |  | 2011-03-05 | 2011-03-12 | 0d | finish no earlier than 2011-03-12 |  | 8h | 8h | 0.5 |
| 151 | 0.1.6.1.10.4 | Draft complete |  | 2d | 2011-03-17 A | 2011-03-18 A | 100% |  |  | 2011-03-05 | 2011-03-12 | 0d | start no earlier than 2011-03-05 |  | 8h | 8h |  |
| 152 | 0.1.6.1.11 | **Standards Compliance** |  | 1.88d | 2011-03-05 | 2011-03-07 | 99% | 0d | 2011-03-20 | 2011-03-05 | 2011-03-12 | 0d |  | Ashish Kunwar | 72h | 16h |  |
| 153 | 0.1.6.1.11.3 | Initial Research | manual | 1d | 2011-03-20 A | 2011-03-20 A | 100% |  |  | 2011-03-05 | 2011-03-12 | 0d |  |  | 8h | 8h |  |
| 154 | 0.1.6.1.11.4 | Draft complete | manual | 1d | 2011-03-21 A | 2011-03-21 A | 100% |  |  | 2011-03-05 | 2011-03-12 | 0d |  |  | 8h | 8h |  |
| 155 | 0.1.6.1.12 | **Maintenance Requirements** |  | 7d | 2011-03-05 A | 2011-03-07 | 99% | 0d |  | 2011-03-05 | 2011-03-12 | 0d |  | Jerry Ocanas | 104h | 48h |  |
| 156 | 0.1.6.1.12.3 | Initial Research | manual | 3d | 2011-03-09 A | 2011-03-11 A | 100% |  |  | 2011-03-05 | 2011-03-12 | 0d |  |  | 24h | 24h | 0.5 |
| 157 | 0.1.6.1.12.4 | Draft complete | manual | 3d | 2011-03-09 A | 2011-03-11 A | 100% |  |  | 2011-03-05 | 2011-03-12 | 0d |  |  | 24h | 24h |  |
| 158 | 0.1.6.1.13 | **Support Requirements** |  | 7d | 2011-03-05 | 2011-03-12 | 99% | 0d | 2011-03-19 | 2011-03-05 | 2011-03-12 | 0d |  | Ashish Kunwar | 193h | 16h |  |
| 159 | 0.1.6.1.13.3 | Initial Research | manual | 2d | 2011-03-19 A | 2011-03-20 A | 100% |  |  | 2011-03-05 | 2011-03-12 | 0d |  |  | 8h | 8h |  |
| 160 | 0.1.6.1.13.4 | Draft complete | manual | 2d | 2011-03-19 A | 2011-03-20 A | 100% |  |  | 2011-03-05 | 2011-03-12 | 0d |  |  | 8h | 8h |  |
| 161 | 0.1.6.1.14 | **Performance Requirements** |  | 7d | 2011-03-05 A | 2011-03-12 | 99% | 0d |  | 2011-03-05 | 2011-03-12 | 0d |  | Julia Darcy | 293h | 116h |  |
| 162 | 0.1.6.1.14.3 | Initial Research | manual | 9d | 2011-03-10 A | 2011-03-20 A | 100% |  |  | 2011-03-05 | 2011-03-12 | 0d |  |  | 58h | 58h | 0.5 |
| 163 | 0.1.6.1.14.4 | Draft complete | manual | 9d | 2011-03-10 A | 2011-03-20 A | 100% |  |  | 2011-03-05 | 2011-03-12 | 0d |  |  | 58h | 58h |  |
| 164 | 0.1.6.1.15 | **Exception Conditions & Handling** |  | 7d | 2011-03-05 | 2011-03-12 | 99% | 0d | 2011-03-17 | 2011-03-05 | 2011-03-12 | 0d |  | Jimmy Kalema | 193h | 16h |  |
| 165 | 0.1.6.1.15.3 | Initial Research | manual | 2d | 2011-03-17 A | 2011-03-18 A | 100% |  |  | 2011-03-05 | 2011-03-12 | 0d |  |  | 8h | 8h | 0.5 |
| 166 | 0.1.6.1.15.4 | Draft complete | manual | 2d | 2011-03-17 A | 2011-03-18 A | 100% |  |  | 2011-03-05 | 2011-03-12 | 0d |  |  | 8h | 8h |  |
| 167 | 0.1.6.1.16 | **System Constraint Requirements** |  | 13d | 2011-03-05 | 2011-03-20 | 99% | 0d | 2011-03-17 | 2011-03-05 | 2011-03-19 | 0d |  | Jimmy Kalema | 385h | 16h |  |
| 168 | 0.1.6.1.16.3 | Initial Research | manual | 2d | 2011-03-17 A | 2011-03-18 A | 100% |  |  | 2011-03-05 | 2011-03-19 | 0d |  |  | 8h | 8h | 0.5 |
| 169 | 0.1.6.1.16.4 | Draft complete | manual | 2d | 2011-03-17 A | 2011-03-18 A | 100% |  |  | 2011-03-05 | 2011-03-19 | 0d |  |  | 8h | 8h |  |
| 170 | 0.1.6.1.17 | **Early Subset & Implementation Priorities** |  | 13d | 2011-03-05 | 2011-03-20 | 99% | 0d | 2011-03-06 | 2011-03-05 | 2011-03-19 | 0d |  | Jerry Ocanas | 497h | 128h |  |
| 171 | 0.1.6.1.17.3 | Initial Research | manual | 8d | 2011-03-06 A | 2011-03-13 A | 100% |  |  | 2011-03-05 | 2011-03-19 | 0d |  |  | 64h | 64h | 0.5 |
| 172 | 0.1.6.1.17.4 | Draft complete | manual | 8d | 2011-03-06 A | 2011-03-13 A | 100% |  |  | 2011-03-05 | 2011-03-19 | 0d |  |  | 64h | 64h |  |

| ID | WBS | Task | Type | Duration | Start | Finish | Complete | Remaining | Actual start | Baseline start | Baseline finish | Baseline duration | Resources | Work | Actual work | Actual Work (hours) | Baseline Week # | Actual Week # |
| --- | --- | --- | --- | --- | --- | --- | --- | --- | --- | --- | --- | --- | --- | --- | --- | --- | --- | --- |
| 173 | 0.1.6.1.18 | **Forseeable Modification & Enhancements** |  | 13d | 2011-03-05 | 2011-03-20 | 99% | 0d | 2011-03-19 | 2011-03-05 | 2011-03-19 | 0d | Ashish Kunwar | 385h | 16h |  |  |  |
| 174 | 0.1.6.1.18.3 | Initial Research | manual | 2d | 2011-03-19 A | 2011-03-20 A | 100% |  |  | 2011-03-05 | 2011-03-19 | 0d |  | 8h | 8h |  |  |  |
| 175 | 0.1.6.1.18.4 | Draft complete | manual | 2d | 2011-03-19 A | 2011-03-20 A | 100% |  |  | 2011-03-05 | 2011-03-19 | 0d |  | 8h | 8h |  |  |  |
| 176 | 0.1.6.1.19 | **Acceptance Criteria** |  | 13d | 2011-03-05 | 2011-03-20 | 99% | 0d | 2011-03-10 | 2011-03-05 | 2011-03-12 | 0d | Julia Darcy | 545h | 176h |  |  |  |
| 177 | 0.1.6.1.19.3 | Initial Research | manual | 9d | 2011-03-10 A | 2011-03-20 A | 100% |  |  | 2011-03-05 | 2011-03-12 | 0d |  | 88h | 88h | 0.5 |  |  |
| 178 | 0.1.6.1.19.4 | Draft complete | manual | 9d | 2011-03-10 A | 2011-03-20 A | 100% |  |  | 2011-03-05 | 2011-03-12 | 0d |  | 88h | 88h |  |  |  |
| 179 | 0.1.6.1.20 | **Design Guidelines** |  | 13d | 2011-03-05 | 2011-03-20 | 99% | 0d | 2011-03-10 | 2011-03-05 | 2011-03-19 | 0d | Julia Darcy | 545h | 176h |  |  |  |
| 180 | 0.1.6.1.20.3 | Initial Research | manual | 9d | 2011-03-10 A | 2011-03-20 A | 100% |  |  | 2011-03-05 | 2011-03-19 | 0d |  | 88h | 88h | 0.5 |  |  |
| 181 | 0.1.6.1.20.4 | Draft complete | manual | 9d | 2011-03-10 A | 2011-03-20 A | 100% |  |  | 2011-03-05 | 2011-03-19 | 0d |  | 88h | 88h |  |  |  |
| 182 | 0.1.6.1.21 | **Assumptions** |  | 13d | 2011-03-05 | 2011-03-20 | 99% | 0d | 2011-03-06 | 2011-03-05 | 2011-03-19 | 0d | Jerry Ocanas | 497h | 128h |  |  |  |
| 183 | 0.1.6.1.21.3 | Initial Research | manual | 8d | 2011-03-06 A | 2011-03-13 A | 100% |  |  | 2011-03-05 | 2011-03-19 | 0d |  | 64h | 64h | 0.5 |  |  |
| 184 | 0.1.6.1.21.4 | Draft complete | manual | 8d | 2011-03-06 A | 2011-03-13 A | 100% |  |  | 2011-03-05 | 2011-03-19 | 0d |  | 64h | 64h |  |  |  |
| 185 | 0.1.6.1.22 | **Sources of Info** |  | 13d | 2011-03-05 | 2011-03-20 | 99% | 0d | 2011-03-19 | 2011-03-05 | 2011-03-19 | 0d | Ashish Kunwar | 385h | 16h |  |  |  |
| 186 | 0.1.6.1.22.3 | Initial Research | manual | 2d | 2011-03-19 A | 2011-03-20 A | 100% |  |  | 2011-03-05 | 2011-03-19 | 0d |  | 8h | 8h |  |  |  |
| 187 | 0.1.6.1.22.4 | Draft complete | manual | 2d | 2011-03-19 A | 2011-03-20 A | 100% |  |  | 2011-03-05 | 2011-03-19 | 0d |  | 8h | 8h |  |  |  |
| 188 | 0.1.6.1.23 | **Use Cases** |  | 13d | 2011-03-05 | 2011-03-20 | 99% | 0d | 2011-03-17 | 2011-03-05 | 2011-03-19 | 0d | Jimmy Kalema | 393h | 24h |  |  |  |
| 189 | 0.1.6.1.23.3 | Initial Research | manual | 2d | 2011-03-17 A | 2011-03-18 A | 100% |  |  | 2011-03-05 | 2011-03-19 | 0d |  | 16h | 16h | 0.5 |  |  |
| 190 | 0.1.6.1.23.4 | Draft complete | manual | 2d | 2011-03-17 A | 2011-03-18 A | 100% |  |  | 2011-03-05 | 2011-03-19 | 0d |  | 8h | 8h |  |  |  |
| 191 | 0.1.6.1.24 | **Glossary of Terms** |  | 13d | 2011-03-05 A | 2011-03-20 | 99% | 0d |  | 2011-03-05 | 2011-03-19 | 0d | Julia Darcy | 48h | 48h |  |  |  |
| 192 | 0.1.6.1.24.3 | Initial Research | manual | 3d | 2011-03-17 A | 2011-03-20 A | 100% |  |  | 2011-03-05 | 2011-03-19 | 0d |  | 24h | 24h | 0.5 |  |  |
| 193 | 0.1.6.1.24.4 | Draft complete | manual | 3d | 2011-03-17 A | 2011-03-20 A | 100% |  |  | 2011-03-05 | 2011-03-19 | 0d |  | 24h | 24h | 0.5 |  |  |
| 194 | 0.1.6.1.25 | Review | manual | 2d | 2011-03-19 A | 2011-03-20 A | 100% |  |  | 2011-03-19 | 2011-03-20 | 0d | Julia Darcy; Jerry Ocanas | 66h | 66h |  |  |  |
| 195 | 0.1.6.3 | Second Draft | manual | 11d | 2011-03-29 A | 2011-04-12 A | 100% |  |  | 2011-03-29 | 2011-04-04 | 0d | Team Mixed Bag | 345h | 345h |  | 11 | 12 |
| 196 | 0.1.6.4 | Requirements Gate Review | manual | 0.88d | 2011-04-13 A | 2011-04-13 A | 100% |  |  | 2011-04-12 | 2011-04-13 | 0d | Team Mixed Bag | 8h | 8h |  | 12 | 12 |
| 197 | 0.1.6.5 | Final Draft | manual | 5d | 2011-04-14 A | 2011-04-20 A | 100% |  |  | 2011-04-14 | 2011-04-21 | 0d | Team Mixed Bag | 153h | 153h | 6 | 13 | 13 |

| ID | WBS | Task | Type | Duration | Start | Finish | Complete | Remaining | Actual start | Baseline start | Baseline finish | Baseline duration | Total slack | Resources | Work | Actual work | Baseline Week # |
| --- | --- | --- | --- | --- | --- | --- | --- | --- | --- | --- | --- | --- | --- | --- | --- | --- | --- |
| 198 | 0.2 | **Secondary Phase (Phase 2)** |  | 61d | 2011-05-13 | 2011-08-05 | 6% | 57.61d | 2011-04-18 | 2011-06-06 | 2011-08-16 | 0d |  |  | 855h | 36h |  |
| 199 | 0.2.1 | **Project Management 2** |  | 1d? | 2011-05-13 | 2011-05-13 |  |  |  | 2011-05-16 | 2011-08-16 | 0d | 0d | Team Mixed Bag | 225h |  |  |
| 200 | 0.2.1.1 | Team Meeting 1 | manual | 1d? | 2011-05-13 | 2011-05-13 |  |  |  |  |  |  |  | Team Mixed Bag | 9h |  | 17 |
| 201 | 0.2.1.2 | Team Meeting 2 | manual | 1d? | 2011-05-13 | 2011-05-13 |  |  |  |  |  |  |  | Team Mixed Bag | 9h |  | 17 |
| 202 | 0.2.1.3 | Team Meeting 3 | manual | 1d? | 2011-05-13 | 2011-05-13 |  |  |  |  |  |  |  | Team Mixed Bag | 9h |  | 18 |
| 203 | 0.2.1.4 | Team Meeting 4 | manual | 1d? | 2011-05-13 | 2011-05-13 |  |  |  |  |  |  |  | Team Mixed Bag | 9h |  | 18 |
| 204 | 0.2.1.5 | Team Meeting 5 | manual | 1d? | 2011-05-13 | 2011-05-13 |  |  |  |  |  |  |  | Team Mixed Bag | 9h |  | 19 |
| 205 | 0.2.1.6 | Team Meeting 6 | manual | 1d? | 2011-05-13 | 2011-05-13 |  |  |  |  |  |  |  | Team Mixed Bag | 9h |  | 19 |
| 206 | 0.2.1.7 | Team Meeting 7 | manual | 1d? | 2011-05-13 | 2011-05-13 |  |  |  |  |  |  |  | Team Mixed Bag | 9h |  | 20 |
| 207 | 0.2.1.8 | Team Meeting 8 | manual | 1d? | 2011-05-13 | 2011-05-13 |  |  |  |  |  |  |  | Team Mixed Bag | 9h |  | 20 |
| 208 | 0.2.1.9 | Team Meeting 9 | manual | 1d? | 2011-05-13 | 2011-05-13 |  |  |  |  |  |  |  | Team Mixed Bag | 9h |  | 21 |
| 209 | 0.2.1.10 | Team Meeting 10 | manual | 1d? | 2011-05-13 | 2011-05-13 |  |  |  |  |  |  |  | Team Mixed Bag | 9h |  | 21 |
| 210 | 0.2.1.11 | Team Meeting 11 | manual | 1d? | 2011-05-13 | 2011-05-13 |  |  |  |  |  |  |  | Team Mixed Bag | 9h |  | 22 |
| 211 | 0.2.1.12 | Team Meeting 12 | manual | 1d? | 2011-05-13 | 2011-05-13 |  |  |  |  |  |  |  | Team Mixed Bag | 9h |  | 22 |
| 212 | 0.2.1.13 | Team Meeting 13 | manual | 1d? | 2011-05-13 | 2011-05-13 |  |  |  |  |  |  |  | Team Mixed Bag | 9h |  | 23 |
| 213 | 0.2.1.14 | Team Meeting 14 | manual | 1d? | 2011-05-13 | 2011-05-13 |  |  |  |  |  |  |  | Team Mixed Bag | 9h |  | 23 |
| 214 | 0.2.1.15 | Team Meeting 15 | manual | 1d? | 2011-05-13 | 2011-05-13 |  |  |  |  |  |  |  | Team Mixed Bag | 9h |  | 24 |
| 215 | 0.2.1.16 | Team Meeting 16 | manual | 1d? | 2011-05-13 | 2011-05-13 |  |  |  |  |  |  |  | Team Mixed Bag | 9h |  | 24 |
| 216 | 0.2.1.17 | Team Meeting 17 | manual | 1d? | 2011-05-13 | 2011-05-13 |  |  |  |  |  |  |  | Team Mixed Bag | 9h |  | 25 |
| 217 | 0.2.1.18 | Team Meeting 18 | manual | 1d? | 2011-05-13 | 2011-05-13 |  |  |  |  |  |  |  | Team Mixed Bag | 9h |  | 25 |
| 218 | 0.2.1.19 | Team Meeting 19 | manual | 1d? | 2011-05-13 | 2011-05-13 |  |  |  |  |  |  |  | Team Mixed Bag | 9h |  | 26 |
| 219 | 0.2.1.20 | Team Meeting 20 | manual | 1d? | 2011-05-13 | 2011-05-13 |  |  |  |  |  |  |  | Team Mixed Bag | 9h |  | 26 |
| 220 | 0.2.1.21 | Team Meeting 21 | manual | 1d? | 2011-05-13 | 2011-05-13 |  |  |  |  |  |  |  | Team Mixed Bag | 9h |  | 27 |
| 221 | 0.2.1.22 | Team Meeting 22 | manual | 1d? | 2011-05-13 | 2011-05-13 |  |  |  |  |  |  |  | Team Mixed Bag | 9h |  | 27 |
| 222 | 0.2.1.23 | Team Meeting 23 | manual | 1d? | 2011-05-13 | 2011-05-13 |  |  |  |  |  |  |  | Team Mixed Bag | 9h |  | 28 |
| 223 | 0.2.1.24 | Team Meeting 24 | manual | 1d? | 2011-05-13 | 2011-05-13 |  |  |  |  |  |  |  | Team Mixed Bag | 9h |  | 28 |

| ID | WBS | Task | Type | Duration | Start | Finish | Complete | Remaining | Baseline start | Baseline finish | Baseline duration | Total slack | Resources | Work | Actual work | Baseline Week # | Actual Week # |
| --- | --- | --- | --- | --- | --- | --- | --- | --- | --- | --- | --- | --- | --- | --- | --- | --- | --- |
| 224 | 0.2.2 | **Project Plan 2** |  | 1d? | 2011-05-13 | 2011-05-13 |  |  | 2011-06-07 | 2011-08-16 | 0d | 0d |  | 72h |  |  |  |
| 225 | 0.2.2.1 | Project Plan Weekly Maintenance 9 | manual | 1d? | 2011-05-13 | 2011-05-13 |  |  | 2011-06-16 | 2011-06-16 | 0d |  | Julia Darcy | 9h |  | 21 |  |
| 226 | 0.2.2.2 | Project Plan Weekly Maintenance 10 | manual | 1d? | 2011-05-13 | 2011-05-13 |  |  | 2011-06-23 | 2011-06-23 | 0d |  | Julia Darcy | 9h |  | 22 |  |
| 227 | 0.2.2.3 | Project Plan Weekly Maintenance 11 | manual | 1d? | 2011-05-13 | 2011-05-13 |  |  | 2011-06-30 | 2011-06-30 | 0d |  | Julia Darcy | 9h |  | 23 |  |
| 228 | 0.2.2.4 | Project Plan Weekly Maintenance 12 | manual | 1d? | 2011-05-13 | 2011-05-13 |  |  | 2011-07-07 | 2011-07-07 | 0d |  | Julia Darcy | 9h |  | 24 |  |
| 229 | 0.2.2.5 | Project Plan Weekly Maintenance 13 | manual | 1d? | 2011-05-13 | 2011-05-13 |  |  | 2011-07-14 | 2011-07-14 | 0d |  | Julia Darcy | 9h |  | 25 |  |
| 230 | 0.2.2.6 | Project Plan Weekly Maintenance 14 | manual | 1d? | 2011-05-13 | 2011-05-13 |  |  | 2011-07-21 | 2011-07-21 | 0d |  | Julia Darcy | 9h |  | 26 |  |
| 231 | 0.2.2.7 | Project Plan Weekly Maintenance 15 | manual | 1d? | 2011-05-13 | 2011-05-13 |  |  | 2011-07-28 | 2011-07-28 | 0d |  | Julia Darcy | 9h |  | 27 |  |
| 232 | 0.2.2.8 | Project Plan Weekly Maintenance 16 | manual | 1d? | 2011-05-13 | 2011-05-13 |  |  | 2011-08-04 | 2011-08-04 | 0d |  | Julia Darcy | 9h |  | 28 |  |
| 233 | 0.2.3 | **Research (Architecture & DDR)** |  | 8d? | 2011-04-18 A | 2011-04-27 | 50% | 4d? |  |  |  | 0d | Team Mixed Bag | 297h | 36h |  |  |
| 234 | 0.2.3.10 | ADS hands on training #1 | manual | 1d | 2011-04-18 A | 2011-04-18 A | 100% |  | 2011-06-07 | 2011-06-07 | 0d |  | Team Mixed Bag | 9h | 9h | 19 | 13 |
| 235 | 0.2.3.11 | ADS hands on training #2 | manual | 1d | 2011-04-20 A | 2011-04-20 A | 100% |  | 2011-06-09 | 2011-06-09 | 0d |  | Team Mixed Bag | 9h | 9h | 19 | 13 |
| 236 | 0.2.3.12 | ADS hands on training #3 | manual | 1d | 2011-04-25 A | 2011-04-25 A | 100% |  | 2011-06-14 | 2011-06-14 | 0d |  | Team Mixed Bag | 9h | 9h | 21 |  |
| 237 | 0.2.3.13 | ADS hands on training #4 | manual | 1d | 2011-04-27 A | 2011-04-27 A | 100% |  | 2011-06-16 | 2011-06-16 | 0d |  | Team Mixed Bag | 9h | 9h | 21 |  |
| 238 | 0.2.3.14 | DDR Exercise #1 | manual | 1d? | 2011-04-18 | 2011-04-18 |  |  | 2011-06-17 | 2011-06-17 | 0d |  | Team Mixed Bag | 9h |  | 21 |  |
| 239 | 0.2.3.15 | DDR Exercise #2 | manual | 1d? | 2011-04-18 | 2011-04-18 |  |  | 2011-06-21 | 2011-06-21 | 0d |  | Team Mixed Bag | 9h |  | 22 |  |
| 240 | 0.2.3.16 | DDR Exercise #3 | manual | 1d? | 2011-04-18 | 2011-04-18 |  |  | 2011-06-23 | 2011-06-23 | 0d |  | Team Mixed Bag | 9h |  | 22 |  |
| 241 | 0.2.3.17 | DDR Exercise #4 | manual | 1d? | 2011-04-18 | 2011-04-18 |  |  | 2011-06-28 | 2011-06-28 | 0d |  | Team Mixed Bag | 9h |  | 23 |  |
| 242 | 0.2.4 | **ADS** |  | 1d | 2011-05-13 | 2011-05-13 |  |  | 2011-06-07 | 2011-06-16 | 0d | 0d |  | 89h |  |  |  |
| 243 | 0.2.4.1 | **First Draft** |  | 1d | 2011-05-13 | 2011-05-13 |  |  |  |  |  | 0d |  | 48h |  |  |  |
| 244 | 0.2.4.1.1 | Compatibility study | manual | 1d | 2011-05-13 | 2011-05-13 |  |  |  |  |  |  |  | 8h |  |  |  |
| 245 | 0.2.4.1.2 | External layers and interfaces | manual | 1d | 2011-05-13 | 2011-05-13 |  |  |  |  |  |  |  | 8h |  |  |  |
| 246 | 0.2.4.1.3 | Sub Components | manual | 1d | 2011-05-13 | 2011-05-13 |  |  |  |  |  |  |  | 8h |  |  |  |
| 247 | 0.2.4.1.4 | Data Flows | manual | 1d | 2011-05-13 | 2011-05-13 |  |  |  |  |  |  |  | 8h |  |  |  |
| 248 | 0.2.4.1.5 | Inputs and Outputs | manual | 1d | 2011-05-13 | 2011-05-13 |  |  |  |  |  |  |  | 8h |  |  |  |
| 249 | 0.2.4.1.6 | Review | manual | 1d | 2011-05-13 | 2011-05-13 |  |  |  |  |  |  |  | 8h |  |  |  |
| 250 | 0.2.4.2 | Second Draft | manual | 1d | 2011-05-13 | 2011-05-13 |  |  |  |  |  |  |  | 8h |  |  |  |
| 251 | 0.2.4.3 | Final Draft | manual | 1d | 2011-05-13 | 2011-05-13 |  |  |  |  |  |  |  | 8h |  |  |  |

| ID | WBS | Task | Type | Duration | Start | Finish | Baseline start | Baseline finish | Baseline duration | Total slack | Resources | Work |
| --- | --- | --- | --- | --- | --- | --- | --- | --- | --- | --- | --- | --- |
| 252 | 0.2.4.4 | **ADS Gate Review** |  | 1d | 2011-05-13 | 2011-05-13 | 2011-06-16 | 2011-06-16 | 0d | 0d | Team Mixed Bag | 25h |
| 253 | 0.2.4.4.1 | Prepare for Presentation | manual | 1d | 2011-05-13 | 2011-05-13 |  |  |  |  |  | 8h |
| 254 | 0.2.4.4.2 | Practice Presentation (Mock) | manual | 1d | 2011-05-13 | 2011-05-13 |  |  |  |  |  | 8h |
| 255 | 0.2.5 | **DDS** |  | 1d | 2011-05-13 | 2011-05-13 | 2011-06-17 | 2011-07-12 | 0d | 0d |  | 56h |
| 256 | 0.2.5.1 | **First Draft** |  | 1d | 2011-05-13 | 2011-05-13 |  |  |  | 0d |  | 40h |
| 257 | 0.2.5.1.1 | Architecture overview | manual | 1d | 2011-05-13 | 2011-05-13 |  |  |  |  |  | 8h |
| 258 | 0.2.5.1.2 | Detailed component design | manual | 1d | 2011-05-13 | 2011-05-13 |  |  |  |  |  | 8h |
| 259 | 0.2.5.1.3 | Detailed Sub-Component Design | manual | 1d | 2011-05-13 | 2011-05-13 |  |  |  |  |  | 8h |
| 260 | 0.2.5.1.4 | Detailed Interfaces | manual | 1d | 2011-05-13 | 2011-05-13 |  |  |  |  |  | 8h |
| 261 | 0.2.5.1.5 | Review | manual | 1d | 2011-05-13 | 2011-05-13 |  |  |  |  |  | 8h |
| 262 | 0.2.5.2 | Second Draft | manual | 1d | 2011-05-13 | 2011-05-13 |  |  |  |  |  | 8h |
| 263 | 0.2.5.3 | Final Draft | manual | 1d | 2011-05-13 | 2011-05-13 |  |  |  |  |  | 8h |
| 264 | 0.2.6 | Order Parts |  | 1d | 2011-05-13 | 2011-05-13 |  |  |  | 60d |  |  |
| 265 | 0.2.7 | **Implementation** |  | 1d | 2011-05-13 | 2011-05-13 |  | 2011-08-11 |  | 60d | Team Mixed Bag | 18h |
| 266 | 0.2.7.1 | Hardware System |  | 1d | 2011-05-13 | 2011-05-13 |  |  |  | 60d | Team Mixed Bag | 9h |
| 267 | 0.2.7.2 | Software System |  | 1d | 2011-05-13 | 2011-05-13 |  |  |  | 60d |  |  |
| 268 | 0.2.8 | **Testing** |  | 1d | 2011-05-13 | 2011-05-13 | 2011-07-13 | 2011-07-21 | 0d | 0d | Team Mixed Bag | 89h |
| 269 | 0.2.8.1 | **Test Plan** |  | 1d | 2011-05-13 | 2011-05-13 |  |  |  | 0d |  | 8h |
| 270 | 0.2.8.1.1 | Review | manual | 1d | 2011-05-13 | 2011-05-13 |  |  |  |  |  | 8h |
| 271 | 0.2.8.2 | **Test Plan Review** |  | 1d | 2011-05-13 | 2011-05-13 | 2011-07-21 | 2011-07-21 | 0d | 0d |  | 16h |
| 272 | 0.2.8.2.1 | Prepare for Presentation | manual | 1d | 2011-05-13 | 2011-05-13 |  |  |  |  |  | 8h |
| 273 | 0.2.8.2.2 | Practice Presentation (Mock) | manual | 1d | 2011-05-13 | 2011-05-13 |  |  |  |  |  | 8h |
| 274 | 0.2.8.3 | **Testing Implementation** |  | 1d | 2011-05-13 | 2011-05-13 |  |  |  | 0d |  | 56h |
| 275 | 0.2.8.3.1 | Unit Hardware Testing | manual | 1d | 2011-05-13 | 2011-05-13 |  |  |  |  |  | 8h |
| 276 | 0.2.8.3.2 | Unit Software Testing | manual | 1d | 2011-05-13 | 2011-05-13 |  |  |  |  |  | 8h |
| 277 | 0.2.8.3.3 | Sub component Testing | manual | 1d | 2011-05-13 | 2011-05-13 |  |  |  |  |  | 8h |
| 278 | 0.2.8.3.4 | Component Testing | manual | 1d | 2011-05-13 | 2011-05-13 |  |  |  |  |  | 8h |
| 279 | 0.2.8.3.5 | Integration Testing | manual | 1d | 2011-05-13 | 2011-05-13 |  |  |  |  |  | 8h |

| ID | WBS | Task | Type | Duration | Start | Finish | Baseline start | Baseline finish | Baseline duration | Total slack | Resources | Work |
| --- | --- | --- | --- | --- | --- | --- | --- | --- | --- | --- | --- | --- |
| 280 | 0.2.8.3.6 | **Complete System Testing** |  | 1d | 2011-05-13 | 2011-05-13 |  |  |  | 0d |  | 16h |
| 281 | 0.2.8.3.6.1 | Verification | manual | 1d | 2011-05-13 | 2011-05-13 |  |  |  |  |  | 8h |
| 282 | 0.2.8.3.6.2 | Validation and Acceptance | manual | 1d | 2011-05-13 | 2011-05-13 |  |  |  |  |  | 8h |
| 283 | 0.2.9 | **Final Presentation / Product Rollout** |  | 1d | 2011-05-13 | 2011-05-13 | 2011-08-11 | 2011-08-11 | 0d | 0d | Team Mixed Bag | 9h |
| 284 | 0.2.9.1 | Prepare for Presentation | manual | 1d | 2011-05-13 | 2011-05-13 |  |  |  |  |  |  |
| 285 | 0.2.9.2 | Practice Presentation (Mock) | manual | 1d | 2011-05-13 | 2011-05-13 |  |  |  |  |  |  |
